# NeuGantt

Schedule from MS Project, 2016-08-30 to 2016-10-14, A marks actual dates.

## Calendars

- Standard: Mon-Fri 08:00-12:00, 13:00-17:00; Sat-Sun off.

## Resources

| Resource |
| --- |
| LN |
| SS |

## Schedule

| ID | WBS | Task | Type | Duration | Start | Finish | Predecessors | Complete | Remaining | Baseline start | Baseline finish | Baseline duration | Total slack | Constraint | Resources | Work | Actual work |
| --- | --- | --- | --- | --- | --- | --- | --- | --- | --- | --- | --- | --- | --- | --- | --- | --- | --- |
| 1 | 1 | **Workshop** |  | 22d | 2016-08-30 08:00 A | 2016-09-29 08:00 |  | 99% | 0d | 2016-08-30 08:00 | 2016-09-29 17:00 | 23d | 12d |  |  | 76h | 76h |
| 2 | 1.1 | Workshop 1 |  | 1d | 2016-08-30 08:00 A | 2016-08-30 17:00 A |  | 100% |  | 2016-08-30 08:00 | 2016-08-30 17:00 | 1d |  |  | LN; SS | 7h | 7h |
| 3 | 1.2 | Workshop 2 |  | 1d | 2016-09-01 08:00 A | 2016-09-01 17:00 A |  | 100% |  | 2016-09-01 08:00 | 2016-09-01 17:00 | 1d |  | start no earlier than 2016-09-01 08:00 | LN; SS | 16h | 16h |
| 4 | 1.3 | Workshop 3 |  | 1d | 2016-09-08 08:00 A | 2016-09-08 17:00 A |  | 100% |  | 2016-09-08 08:00 | 2016-09-08 17:00 | 1d |  | start no earlier than 2016-09-08 08:00 | LN; SS | 16h | 16h |
| 5 | 1.4 | Workshop 4 |  | 1d | 2016-09-13 08:00 A | 2016-09-13 17:00 A |  | 100% |  | 2016-09-13 08:00 | 2016-09-13 17:00 | 1d |  | start no earlier than 2016-09-13 08:00 | LN; SS | 7h | 7h |
| 6 | 1.5 | Workshop 5 |  | 1d | 2016-09-15 08:00 A | 2016-09-15 17:00 A |  | 100% |  | 2016-09-15 08:00 | 2016-09-15 17:00 | 1d |  | start no earlier than 2016-09-15 08:00 | LN; SS | 16h | 16h |
| 7 | 1.6 | Workshop 6 |  | 1d | 2016-09-20 08:00 A | 2016-09-20 17:00 A |  | 100% |  | 2016-09-20 08:00 | 2016-09-20 17:00 | 1d |  | start no earlier than 2016-09-20 08:00 | LN; SS | 7h | 7h |
| 8 | 1.7 | Workshop 7 | milestone | 0d | 2016-09-22 08:00 A | 2016-09-22 08:00 A |  | 100% |  | 2016-09-22 08:00 | 2016-09-22 17:00 | 1d |  | start no earlier than 2016-09-22 08:00 | LN; SS |  |  |
| 9 | 1.8 | Workshop 8 |  | 1d | 2016-09-27 08:00 A | 2016-09-27 17:00 A |  | 100% |  | 2016-09-27 08:00 | 2016-09-27 17:00 | 1d |  | start no earlier than 2016-09-27 08:00 | LN; SS | 7h | 7h |
| 10 | 1.9 | Workshop 9 | milestone | 0d | 2016-09-29 08:00 | 2016-09-29 08:00 |  |  |  | 2016-09-29 08:00 | 2016-09-29 17:00 | 1d | 12d | start no earlier than 2016-09-29 08:00 | LN; SS |  |  |
| 11 | 2 | **Vorbereitung** |  | 3.56d | 2016-08-30 11:30 A | 2016-09-02 17:00 A |  | 100% |  | 2016-08-30 11:30 | 2016-09-02 17:00 | 3.56d |  |  |  | 31h | 31h |
| 12 | 2.1 | Idee |  | 0.25d | 2016-08-30 11:30 A | 2016-08-30 14:30 A | 2SS+3.5h | 100% |  | 2016-08-30 11:30 | 2016-08-30 14:30 | 0.25d |  |  | LN; SS | 4h | 4h |
| 13 | 2.2 | Ideensammlung |  | 0.38d | 2016-08-30 14:30 A | 2016-08-31 08:30 A | 12 | 100% |  | 2016-08-30 14:30 | 2016-08-31 08:30 | 0.38d |  |  | LN; SS | 6h | 6h |
| 14 | 2.3 | Besprechen der Ideen |  | 0.12d | 2016-08-31 08:30 A | 2016-08-31 09:30 A | 13 | 100% |  | 2016-08-31 08:30 | 2016-08-31 09:30 | 0.12d |  |  | LN; SS | 2h | 2h |
| 15 | 2.4 | Recherche über KanBan |  | 0.38d | 2016-08-31 09:30 A | 2016-08-31 13:30 A | 14 | 100% |  | 2016-08-31 09:30 | 2016-08-31 13:30 | 0.38d |  |  | LN; SS | 4h | 4h |
| 16 | 2.5 | **Recherche über Technologien** |  | 2.44d | 2016-08-31 13:30 A | 2016-09-02 17:00 A |  | 100% |  | 2016-08-31 13:30 | 2016-09-02 17:00 | 2.44d |  |  |  | 15h | 15h |
| 17 | 2.5.1 | UWP |  | 1.44d | 2016-08-31 13:30 A | 2016-09-02 17:00 A | 15 | 100% |  | 2016-08-31 13:30 | 2016-09-02 17:00 | 1.44d |  |  | SS; LN | 5h | 5h |
| 18 | 2.5.2 | .NET Core |  | 1.44d | 2016-08-31 13:30 A | 2016-09-02 17:00 A | 15 | 100% |  | 2016-08-31 13:30 | 2016-09-02 17:00 | 1.44d |  |  | LN; SS | 5h | 5h |
| 19 | 2.5.3 | SQLite |  | 1.44d | 2016-08-31 13:30 A | 2016-09-02 17:00 A | 15 | 100% |  | 2016-08-31 13:30 | 2016-09-02 17:00 | 1.44d |  |  | LN; SS | 5h | 5h |
| 20 | 3 | **Meeting** |  | 16.25d | 2016-09-06 08:00 A | 2016-09-28 10:00 A |  | 100% |  | 2016-09-06 08:00 | 2016-09-28 10:00 | 16.25d |  |  |  | 16h | 16h |
| 21 | 3.1 | Meeting 0 |  | 1d | 2016-09-06 08:00 A | 2016-09-06 17:00 A |  | 100% |  | 2016-09-06 08:00 | 2016-09-06 17:00 | 1d |  | start no earlier than 2016-09-06 08:00 | LN; SS | 4h | 4h |
| 22 | 3.2 | Meeting 1 |  | 2h | 2016-09-14 08:00 A | 2016-09-14 10:00 A |  | 100% |  | 2016-09-14 08:00 | 2016-09-14 10:00 | 2h |  | start no earlier than 2016-09-14 08:00 | LN; SS | 4h | 4h |
| 23 | 3.3 | Meeting 2 |  | 2h | 2016-09-21 08:00 A | 2016-09-21 10:00 A |  | 100% |  | 2016-09-21 08:00 | 2016-09-21 10:00 | 2h |  | start no earlier than 2016-09-21 08:00 | LN; SS | 4h | 4h |
| 24 | 3.4 | Meeting 3 |  | 2h | 2016-09-28 08:00 A | 2016-09-28 10:00 A |  | 100% |  | 2016-09-28 08:00 | 2016-09-28 10:00 | 2h |  | start no earlier than 2016-09-28 08:00 | LN; SS | 4h | 4h |

| ID | WBS | Task | Duration | Start | Finish | Predecessors | Complete | Baseline start | Baseline finish | Baseline duration | Resources | Work | Actual work |
| --- | --- | --- | --- | --- | --- | --- | --- | --- | --- | --- | --- | --- | --- |
| 25 | 4 | **Organisatorisches** | 2.88d | 2016-09-05 08:00 A | 2016-09-07 16:00 A |  | 100% | 2016-09-05 08:00 | 2016-09-07 16:00 | 2.88d |  | 20h | 20h |
| 26 | 4.1 | PSP erstellen | 0.75d | 2016-09-05 08:00 A | 2016-09-05 15:00 A | 19, 17, 18 | 100% | 2016-09-05 08:00 | 2016-09-05 15:00 | 0.75d | LN; SS | 8h | 8h |
| 27 | 4.2 | Beschreibung der Arbeitspakete | 0.5d | 2016-09-07 08:00 A | 2016-09-07 12:00 A | 26, 21 | 100% | 2016-09-07 08:00 | 2016-09-07 12:00 | 0.5d | LN; SS | 8h | 8h |
| 28 | 4.3 | Zeitplan erstellen | 0.12d | 2016-09-07 13:00 A | 2016-09-07 14:00 A | 27 | 100% | 2016-09-07 13:00 | 2016-09-07 14:00 | 0.12d | LN; SS | 2h | 2h |
| 29 | 4.4 | Projektdefinition schreiben | 0.25d | 2016-09-07 14:00 A | 2016-09-07 16:00 A | 28 | 100% | 2016-09-07 14:00 | 2016-09-07 16:00 | 0.25d | LN | 2h | 2h |
| 30 | 5 | **Entwurf** | 2.62d | 2016-09-07 14:00 A | 2016-09-12 10:00 A |  | 100% | 2016-09-07 14:00 | 2016-09-12 10:00 | 2.62d |  | 7h | 7h |
| 31 | 5.1 | Programmablauf beschreiben | 1.12d | 2016-09-07 16:00 A | 2016-09-09 17:00 A | 29 | 100% | 2016-09-07 16:00 | 2016-09-09 17:00 | 1.12d | LN | 3h | 3h |
| 32 | 5.2 | Grobe Skizzen von UI anfertigen | 0.25d | 2016-09-07 14:00 A | 2016-09-07 16:00 A | 28 | 100% | 2016-09-07 14:00 | 2016-09-07 16:00 | 0.25d | SS | 2h | 2h |
| 33 | 5.3 | Datenmodell erstellen | 0.25d | 2016-09-12 08:00 A | 2016-09-12 10:00 A | 31 | 100% | 2016-09-12 08:00 | 2016-09-12 10:00 | 0.25d | LN | 2h | 2h |
| 34 | 6 | **Konzeption** | 2.44d? | 2016-09-07 16:00 A | 2016-09-12 10:30 A |  | 100% | 2016-09-07 16:00 | 2016-09-12 10:30 | 2.44d? |  | 11h | 11h |
| 35 | 6.1 | **Skizzen erstellen** | 2.12d? | 2016-09-07 16:00 A | 2016-09-09 17:00 A |  | 100% | 2016-09-07 16:00 | 2016-09-09 17:00 | 2.12d? |  | 9h | 9h |
| 36 | 6.1.1 | Anmeldebildschirm | 0.12d? | 2016-09-07 16:00 A | 2016-09-07 17:00 A | 32 | 100% | 2016-09-07 16:00 | 2016-09-07 17:00 | 0.12d? | SS | 1h | 1h |
| 37 | 6.1.2 | Registrierungsbildschirm | 0.12d? | 2016-09-09 08:00 A | 2016-09-09 09:00 A | 36, 4 | 100% | 2016-09-09 08:00 | 2016-09-09 09:00 | 0.12d? | SS | 1h | 1h |
| 38 | 6.1.3 | Hauptmaske | 0.12d? | 2016-09-09 09:00 A | 2016-09-09 10:00 A | 37 | 100% | 2016-09-09 09:00 | 2016-09-09 10:00 | 0.12d? | SS | 1h | 1h |
| 39 | 6.1.4 | Teamverwaltungsansicht | 0.12d? | 2016-09-09 10:00 A | 2016-09-09 11:00 A | 38 | 100% | 2016-09-09 10:00 | 2016-09-09 11:00 | 0.12d? | SS | 1h | 1h |
| 40 | 6.1.5 | Board-Einstellungen(Gruppenleiter) | 0.12d? | 2016-09-09 11:00 A | 2016-09-09 12:00 A | 39 | 100% | 2016-09-09 11:00 | 2016-09-09 12:00 | 0.12d? | SS | 1h | 1h |
| 41 | 6.1.6 | To-Do-Ansicht | 0.12d? | 2016-09-09 13:00 A | 2016-09-09 14:00 A | 40 | 100% | 2016-09-09 13:00 | 2016-09-09 14:00 | 0.12d? | SS | 1h | 1h |
| 42 | 6.1.7 | In-Progress-Ansicht | 0.12d? | 2016-09-09 14:00 A | 2016-09-09 15:00 A | 41 | 100% | 2016-09-09 14:00 | 2016-09-09 15:00 | 0.12d? | SS | 1h | 1h |
| 43 | 6.1.8 | Done-Ansicht | 0.12d? | 2016-09-09 15:00 A | 2016-09-09 16:00 A | 42 | 100% | 2016-09-09 15:00 | 2016-09-09 16:00 | 0.12d? | SS | 1h | 1h |
| 44 | 6.1.9 | Einzel Ticket-Ansicht | 0.12d | 2016-09-09 16:00 A | 2016-09-09 17:00 A | 43 | 100% | 2016-09-09 16:00 | 2016-09-09 17:00 | 0.12d | SS | 1h | 1h |
| 45 | 6.2 | **Standards festlegen** | 0.31d? | 2016-09-12 08:00 A | 2016-09-12 10:30 A |  | 100% | 2016-09-12 08:00 | 2016-09-12 10:30 | 0.31d? |  | 2h | 2h |
| 46 | 6.2.1 | GUI Farben | 0.06d? | 2016-09-12 08:00 A | 2016-09-12 08:30 A | 44 | 100% | 2016-09-12 08:00 | 2016-09-12 08:30 | 0.06d? | SS | 0.5h | 0.5h |
| 47 | 6.2.2 | Codestandards | 0.06d? | 2016-09-12 08:30 A | 2016-09-12 09:00 A | 46 | 100% | 2016-09-12 08:30 | 2016-09-12 09:00 | 0.06d? | LN | 0.5h | 0.5h |
| 48 | 6.2.3 | Verwendete Technologien | 0.06d? | 2016-09-12 10:00 A | 2016-09-12 10:30 A | 47, 33 | 100% | 2016-09-12 10:00 | 2016-09-12 10:30 | 0.06d? | LN; SS | 1h | 1h |

| ID | WBS | Task | Type | Duration | Start | Finish | Predecessors | Complete | Remaining | Baseline start | Baseline finish | Baseline duration | Total slack | Constraint | Resources | Work | Actual work |
| --- | --- | --- | --- | --- | --- | --- | --- | --- | --- | --- | --- | --- | --- | --- | --- | --- | --- |
| 49 | 7 | **Realisierung** |  | 11d? | 2016-09-14 08:00 A | 2016-09-28 17:00 |  | 94% | 0.7d? | 2016-09-14 08:00 | 2016-09-28 17:00 | 11d? | 12d |  |  | 91h | 83h |
| 50 | 7.1 | Beginn Realisierung | milestone | 0d | 2016-09-14 08:00 A | 2016-09-14 08:00 A | 48 | 100% |  | 2016-09-14 08:00 | 2016-09-14 08:00 | 0d |  | start no earlier than 2016-09-14 08:00 |  |  |  |
| 51 | 7.2 | **Frontend implementieren** |  | 5.62d? | 2016-09-14 08:00 A | 2016-09-21 14:00 A |  | 100% |  | 2016-09-14 08:00 | 2016-09-28 17:00 | 11d? |  |  |  | 33h | 33h |
| 52 | 7.2.1 | Anmeldebildschirm |  | 0.19d? | 2016-09-14 08:00 A | 2016-09-14 09:30 A | 50 | 100% |  | 2016-09-14 08:00 | 2016-09-14 09:30 | 0.19d? |  |  | SS | 1.5h | 1.5h |
| 53 | 7.2.2 | Registrierungsbildschirm |  | 0.19d? | 2016-09-14 09:30 A | 2016-09-14 11:00 A | 52 | 100% |  | 2016-09-16 08:00 | 2016-09-16 09:30 | 0.19d? |  |  | SS | 1.5h | 1.5h |
| 54 | 7.2.3 | Teamverwaltungsansicht |  | 1d? | 2016-09-14 11:00 A | 2016-09-15 11:00 A | 53 | 100% |  | 2016-09-19 09:30 | 2016-09-19 14:30 | 0.5d? |  |  | SS | 8h | 8h |
| 55 | 7.2.4 | Hauptmaske |  | 0.62d? | 2016-09-15 11:00 A | 2016-09-15 17:00 A | 54 | 100% |  | 2016-09-16 11:30 | 2016-09-16 14:30 | 0.25d? |  |  | SS | 5h | 5h |
| 56 | 7.2.5 | Board-Einstellungen |  | 1.12d? | 2016-09-16 08:00 A | 2016-09-19 09:00 A | 55 | 100% |  | 2016-09-20 11:30 | 2016-09-21 17:00 | 1.56d? |  | start no later than 2016-09-23 08:00 | SS | 3h | 3h |
| 57 | 7.2.6 | Einzel Ticket-Ansicht |  | 1d | 2016-09-19 09:00 A | 2016-09-20 09:00 A | 56 | 100% |  | 2016-09-26 16:00 | 2016-09-27 11:00 | 0.5d |  |  | LN | 8h | 8h |
| 58 | 7.2.7 | To-Do-Ansicht |  | 1d? | 2016-09-20 09:00 A | 2016-09-21 09:00 A | 57 | 100% |  | 2016-09-23 10:00 | 2016-09-23 12:00 | 0.25d? |  | start no later than 2016-09-21 08:00 | SS | 2h | 2h |
| 59 | 7.2.8 | In-Progress-Ansicht |  | 0.25d? | 2016-09-21 09:00 A | 2016-09-21 11:00 A | 58 | 100% |  | 2016-09-23 16:00 | 2016-09-26 09:00 | 0.25d? |  |  | SS | 2h | 2h |
| 60 | 7.2.9 | Done-Ansicht |  | 0.25d? | 2016-09-21 11:00 A | 2016-09-21 14:00 A | 59 | 100% |  | 2016-09-26 13:00 | 2016-09-26 14:00 | 0.12d? |  |  | SS | 2h | 2h |
| 61 | 7.3 | **Backend implementieren** |  | 11d? | 2016-09-14 08:00 A | 2016-09-28 17:00 |  | 90% | 1.1d? | 2016-09-14 08:00 | 2016-09-26 17:00 | 9d? | 12d |  |  | 58h | 50h |
| 62 | 7.3.1 | Datenbankmodell umsetzen |  | 0.25d? | 2016-09-14 08:00 A | 2016-09-14 10:00 A | 50 | 100% |  | 2016-09-14 08:00 | 2016-09-14 10:00 | 0.25d? |  |  | LN | 2h | 2h |
| 63 | 7.3.2 | Entity Framework umsetzen |  | 1.75d? | 2016-09-14 10:00 A | 2016-09-16 17:00 A | 62 | 100% |  | 2016-09-14 10:00 | 2016-09-16 17:00 | 1.75d? |  |  | LN | 6h | 6h |
| 64 | 7.3.3 | Routen implementieren (Prototyp) |  | 6d | 2016-09-19 08:00 A | 2016-09-26 17:00 A | 63 | 100% |  | 2016-09-19 08:00 | 2016-09-26 17:00 | 5d |  |  | LN | 34h | 34h |
| 65 | 7.3.4 | Routen Umbau: RESTful |  | 2d | 2016-09-27 08:00 A | 2016-09-28 17:00 | 64 | 50% | 1d |  |  |  | 12d |  | LN | 16h | 8h |
| 66 | 8 | **Präsentation** |  | 2d? | 2016-09-29 08:00 A | 2016-09-30 17:00 |  | 69% | 0.62d? | 2016-09-28 08:00 | 2016-09-30 12:00 | 2.5d? | 0d |  |  | 22h | 14h |
| 67 | 8.1 | Präsentation erstellen |  | 0.62d? | 2016-09-29 08:00 A | 2016-09-29 17:00 A | 65 | 100% |  | 2016-09-28 08:00 | 2016-09-28 17:00 | 1d? |  | start no earlier than 2016-09-29 08:00 | LN; SS | 6h | 6h |
| 68 | 8.2 | Präsentation halten |  | 1d | 2016-09-30 08:00 A | 2016-09-30 17:00 | 67 | 50% | 0.5d | 2016-09-30 08:00 | 2016-09-30 12:00 | 0.5d | 0d | finish no earlier than 2016-09-30 17:00 | LN; SS | 16h | 8h |
| 69 | 8.3 | Modul Ende | milestone | 0d | 2016-09-30 08:00 A | 2016-09-30 08:00 A |  | 100% |  | 2016-09-30 08:00 | 2016-09-30 08:00 | 0d |  | start no earlier than 2016-09-30 08:00 |  |  |  |
| 70 | 9 | **Frontend Logik** |  | 6.5d? | 2016-10-03 08:00 | 2016-10-11 12:00 |  |  |  |  |  |  | 0d |  |  | 89h |  |
| 71 | 9.1 | Anmeldebildschirm Logik |  | 1d? | 2016-10-03 08:00 | 2016-10-03 17:00 | 68 |  |  | 2016-09-14 09:30 | 2016-09-14 13:30 | 0.38d? | 0d |  | SS; LN | 11h |  |
| 72 | 9.2 | Registrierungsbildschirm Logik |  | 1d? | 2016-10-04 08:00 | 2016-10-04 17:00 | 71 |  |  | 2016-09-16 09:30 | 2016-09-16 11:30 | 0.25d? | 0d | start no later than 2016-10-07 08:00 | SS; LN | 12h |  |
| 73 | 9.3 | Hauptmaske Logik |  | 0.75d? | 2016-10-05 08:00 | 2016-10-05 15:00 | 72 |  |  | 2016-09-16 14:30 | 2016-09-19 09:30 | 0.5d? | 0d |  | SS; LN | 12h |  |
| 74 | 9.4 | Teamverwaltungsansicht Logik |  | 0.75d? | 2016-10-05 15:00 | 2016-10-06 12:00 | 73 |  |  | 2016-09-19 14:30 | 2016-09-20 11:30 | 0.75d? | 0d |  | LN; SS | 12h |  |
| 75 | 9.5 | To-Do-Ansicht Logik |  | 0.5d? | 2016-10-06 13:00 | 2016-10-06 17:00 | 74 |  |  | 2016-09-23 13:00 | 2016-09-23 16:00 | 0.38d? | 0d |  | SS; LN | 8h |  |
| 76 | 9.6 | In-Progress-Ansicht Logik |  | 0.5d? | 2016-10-07 08:00 | 2016-10-07 12:00 | 75 |  |  | 2016-09-26 09:00 | 2016-09-26 12:00 | 0.38d? | 0d |  | SS; LN | 8h |  |
| 77 | 9.7 | Done-Ansicht Logik |  | 0.5d? | 2016-10-07 13:00 | 2016-10-07 17:00 | 76 |  |  | 2016-09-26 14:00 | 2016-09-26 16:00 | 0.25d? | 0d |  | SS; LN | 8h |  |
| 78 | 9.8 | Einzel Ticket-Ansicht Logik |  | 0.62d | 2016-10-10 08:00 | 2016-10-10 17:00 | 77 |  |  | 2016-09-27 11:00 | 2016-09-28 17:00 | 1.62d | 0d |  | SS; LN | 10h |  |
| 79 | 9.9 | Board-Einstellungen Logik |  | 0.5d? | 2016-10-11 08:00 | 2016-10-11 12:00 | 78 |  |  | 2016-09-23 08:00 | 2016-09-23 10:00 | 0.25d? | 0d |  | SS; LN | 8h |  |

| ID | WBS | Task | Duration | Start | Finish | Predecessors | Baseline start | Baseline finish | Baseline duration | Total slack | Resources | Work |
| --- | --- | --- | --- | --- | --- | --- | --- | --- | --- | --- | --- | --- |
| 80 | 10 | **Backend Logik** | 3.12d | 2016-10-11 13:00 | 2016-10-14 14:00 |  |  |  |  | 0d |  | 50h |
| 81 | 10.1 | Routen implementieren (gemäß Frontend) | 3.12d | 2016-10-11 13:00 | 2016-10-14 14:00 | 79 |  |  |  | 0d | LN; SS | 50h |
| 82 | 11 | **Assets** | 0.38d | 2016-10-14 14:00 | 2016-10-14 17:00 |  | 2016-09-27 08:00 | 2016-09-27 09:00 | 0.12d | 0d |  | 3h |
| 83 | 11.1 | Logo erstellen/besorgen | 0.38d | 2016-10-14 14:00 | 2016-10-14 17:00 | 81 | 2016-09-27 08:00 | 2016-09-27 09:00 | 0.12d | 0d | LN | 3h |
